# netcollege开发计划

Schedule from MS Project, 2019-09-11 to 2019-12-17, A marks actual dates.

## Calendars

- 标准: Mon-Fri 08:00-12:00, 13:00-17:00; Sat-Sun off. Exceptions (off unless hours are given): 2019-09-13 to 2019-09-15 (中秋节), 2019-09-29 08:00-12:00, 13:00-17:00 (国庆调整工作日9.29), 2019-10-01 to 2019-10-07 (国庆), 2019-10-12 08:00-12:00, 13:00-17:00 (国庆调整工作日10.12).

## Resources

| Resource |
| --- |
| 开分人员 |
| 冯雷 |
| 王战永 |

## Schedule

| ID | WBS | Task | Duration | Start | Finish | Predecessors | Complete | Remaining | Total slack | Free slack | Resources | Work | Actual work |
| --- | --- | --- | --- | --- | --- | --- | --- | --- | --- | --- | --- | --- | --- |
| 1 | 1 | **netcollege开发** | 65.29d | 2019-09-11 08:00 A | 2019-12-17 10:19 |  | 5% | 61.81d | 0d |  |  | 780h | 84h |
| 2 | 1.1 | **开发准备/代码分析** | 6d | 2019-09-11 08:00 A | 2019-09-19 17:00 |  | 85% | 0.92d | 0d |  |  | 100h | 84h |
| 3 | 1.1.1 | 建立代码版本控制git仓库 | 0.5d | 2019-09-12 08:00 A | 2019-09-12 12:00 A |  | 100% |  |  |  | 冯雷 | 4h | 4h |
| 4 | 1.1.2 | 分析研究代码结构 | 4d | 2019-09-11 08:00 A | 2019-09-17 17:00 A |  | 100% |  |  |  | 冯雷; 王战永 | 64h | 64h |
| 5 | 1.1.3 | 导入前端框架依赖js/css/font/创建新界面layout/header/footer/menu | 2d | 2019-09-18 08:00 A | 2019-09-19 17:00 | 4 | 50% | 1d | 0d |  | 冯雷; 王战永 | 32h | 16h |
| 6 | 1.2 | **后台功能** | 40.01d | 2019-09-20 08:00 | 2019-11-20 08:02 |  |  |  | 0d |  |  | 460h |  |
| 7 | 1.2.1 | 后台首页 | 0.56d | 2019-09-20 08:00 | 2019-09-20 13:26 | 5 |  |  | 7.78d | 0d | 冯雷 [90%] | 4h |  |
| 8 | 1.2.2 | **设备管理** | 8.33d | 2019-09-20 08:00 | 2019-10-08 10:40 |  |  |  | 0d |  |  | 96h |  |
| 9 | 1.2.2.1 | **实验设备管理** | 2.78d | 2019-09-20 13:26 | 2019-09-25 10:40 |  |  |  | 7.78d |  |  | 20h |  |
| 10 | 1.2.2.1.1 | 实验设备列表 | 0.56d | 2019-09-20 13:26 | 2019-09-23 08:53 | 7 |  |  | 7.78d | 0d | 冯雷 [90%] | 4h |  |
| 11 | 1.2.2.1.2 | 新增实验设备 | 0.56d | 2019-09-23 08:53 | 2019-09-23 14:20 | 10 |  |  | 7.78d | 0d | 冯雷 [90%] | 4h |  |
| 12 | 1.2.2.1.3 | 查看设备状态 | 0.56d | 2019-09-23 14:20 | 2019-09-24 09:46 | 11 |  |  | 7.78d | 0d | 冯雷 [90%] | 4h |  |
| 13 | 1.2.2.1.4 | 编辑实验设备 | 0.56d | 2019-09-24 09:46 | 2019-09-24 15:13 | 12 |  |  | 7.78d | 0d | 冯雷 [90%] | 4h |  |
| 14 | 1.2.2.1.5 | 删除实验设备 | 0.56d | 2019-09-24 15:13 | 2019-09-25 10:40 | 13 |  |  | 7.78d | 0d | 冯雷 [90%] | 4h |  |
| 15 | 1.2.2.2 | **设备类别设置** | 2.86d | 2019-09-20 08:00 | 2019-09-24 15:51 |  |  |  | 0d |  |  | 16h |  |
| 16 | 1.2.2.2.1 | 设备类别列表 | 0.71d | 2019-09-20 08:00 | 2019-09-20 14:42 | 5 |  |  | 0d |  | 王战永 [70%] | 4h |  |
| 17 | 1.2.2.2.2 | 新建设备类别 | 0.71d | 2019-09-20 14:42 | 2019-09-23 11:25 | 16 |  |  | 0d |  | 王战永 [70%] | 4h |  |
| 18 | 1.2.2.2.3 | 编辑设备类别 | 0.71d | 2019-09-23 11:25 | 2019-09-24 09:08 | 17 |  |  | 0d |  | 王战永 [70%] | 4h |  |
| 19 | 1.2.2.2.4 | 删除设备类别 | 0.71d | 2019-09-24 09:08 | 2019-09-24 15:51 | 18 |  |  | 0d |  | 王战永 [70%] | 4h |  |
| 20 | 1.2.2.3 | **设备型号管理** | 2.22d | 2019-09-25 10:40 | 2019-09-27 13:27 |  |  |  | 7.78d |  |  | 16h |  |
| 21 | 1.2.2.3.1 | 设备型号列表 | 0.56d | 2019-09-25 10:40 | 2019-09-25 16:06 | 14 |  |  | 7.78d | 0d | 冯雷 [90%] | 4h |  |
| 22 | 1.2.2.3.2 | 新建设备型号 | 0.56d | 2019-09-25 16:06 | 2019-09-26 11:33 | 21 |  |  | 7.78d | 0d | 冯雷 [90%] | 4h |  |
| 23 | 1.2.2.3.3 | 编辑设备型号 | 0.56d | 2019-09-26 11:33 | 2019-09-27 08:00 | 22 |  |  | 7.78d | 0d | 冯雷 [90%] | 4h |  |
| 24 | 1.2.2.3.4 | 删除设备型号 | 0.56d | 2019-09-27 08:00 | 2019-09-27 13:27 | 23 |  |  | 7.78d | 0d | 冯雷 [90%] | 4h |  |

| ID | WBS | Task | Duration | Start | Finish | Predecessors | Total slack | Free slack | Resources | Work |
| --- | --- | --- | --- | --- | --- | --- | --- | --- | --- | --- |
| 25 | 1.2.2.4 | **设备命令过滤** | 4.29d | 2019-09-24 15:51 | 2019-09-30 09:09 |  | 0d |  |  | 24h |
| 26 | 1.2.2.4.1 | 设备命令列表 | 0.71d | 2019-09-24 15:51 | 2019-09-25 13:34 | 19 | 0d |  | 王战永 [70%] | 4h |
| 27 | 1.2.2.4.2 | 添加过滤指令-新增禁止指令例外参数 | 0.71d | 2019-09-25 13:34 | 2019-09-26 10:17 | 26 | 0d |  | 王战永 [70%] | 4h |
| 28 | 1.2.2.4.3 | 查看禁止指令例外参数-编辑例外参数 | 0.71d | 2019-09-26 10:17 | 2019-09-27 08:00 | 27 | 0d |  | 王战永 [70%] | 4h |
| 29 | 1.2.2.4.4 | 查看禁止指令例外参数-删除列外参数 | 0.71d | 2019-09-27 08:00 | 2019-09-27 14:43 | 28 | 0d |  | 王战永 [70%] | 4h |
| 30 | 1.2.2.4.5 | 编辑命令-新增禁止指令例外参数 | 0.71d | 2019-09-27 14:43 | 2019-09-29 11:26 | 29 | 0d |  | 王战永 [70%] | 4h |
| 31 | 1.2.2.4.6 | 删除命令 | 0.71d | 2019-09-29 11:26 | 2019-09-30 09:09 | 30 | 0d |  | 王战永 [70%] | 4h |
| 32 | 1.2.2.5 | **虚拟化设备管理** | 2.78d | 2019-09-27 13:27 | 2019-10-08 10:40 |  | 7.78d |  |  | 20h |
| 33 | 1.2.2.5.1 | 虚拟化设备列表 | 0.56d | 2019-09-27 13:27 | 2019-09-29 08:53 | 24 | 7.78d | 0d | 冯雷 [90%] | 4h |
| 34 | 1.2.2.5.2 | 新增虚拟化设备 | 0.56d | 2019-09-29 08:53 | 2019-09-29 14:20 | 33 | 7.78d | 0d | 冯雷 [90%] | 4h |
| 35 | 1.2.2.5.3 | 查看虚拟系统-新增虚拟系统 | 0.56d | 2019-09-29 14:20 | 2019-09-30 09:47 | 34 | 7.78d | 0d | 冯雷 [90%] | 4h |
| 36 | 1.2.2.5.4 | 编辑虚拟化设备 | 0.56d | 2019-09-30 09:47 | 2019-09-30 15:13 | 35 | 7.78d | 0d | 冯雷 [90%] | 4h |
| 37 | 1.2.2.5.5 | 删除虚拟化设备 | 0.56d | 2019-09-30 15:13 | 2019-10-08 10:40 | 36 | 7.78d | 0d | 冯雷 [90%] | 4h |
| 38 | 1.2.3 | **实验室管理** | 9.29d | 2019-09-30 09:09 | 2019-10-17 11:26 |  | 0d |  |  | 88h |
| 39 | 1.2.3.1 | **实验室管理** | 9.29d | 2019-09-30 09:09 | 2019-10-17 11:26 |  | 0d |  |  | 52h |
| 40 | 1.2.3.1.1 | 实验室列表 | 0.71d | 2019-09-30 09:09 | 2019-09-30 15:51 | 31 | 0d |  | 王战永 [70%] | 4h |
| 41 | 1.2.3.1.2 | 新建实验室 | 0.71d | 2019-09-30 15:51 | 2019-10-08 13:34 | 40 | 0d |  | 王战永 [70%] | 4h |
| 42 | 1.2.3.1.3 | 查看实验组-新建实验组 | 0.71d | 2019-10-08 13:34 | 2019-10-09 10:17 | 41 | 0d |  | 王战永 [70%] | 4h |
| 43 | 1.2.3.1.4 | 查看实验组-克隆实验组 | 0.71d | 2019-10-09 10:17 | 2019-10-10 08:00 | 42 | 0d |  | 王战永 [70%] | 4h |
| 44 | 1.2.3.1.5 | 查看实验组-查看拥有设备-查看设备状态 | 0.71d | 2019-10-10 08:00 | 2019-10-10 14:43 | 43 | 0d |  | 王战永 [70%] | 4h |
| 45 | 1.2.3.1.6 | 查看实验组-查看拥有设备-编辑设备信息 | 0.71d | 2019-10-10 14:43 | 2019-10-11 11:26 | 44 | 0d |  | 王战永 [70%] | 4h |
| 46 | 1.2.3.1.7 | 查看实验组-查看拥有设备-删除设备 | 0.71d | 2019-10-11 11:26 | 2019-10-12 09:09 | 45 | 0d |  | 王战永 [70%] | 4h |
| 47 | 1.2.3.1.8 | 查看实验组-查看拥有设备-安排实验用户-实验用户列表 | 0.71d | 2019-10-12 09:09 | 2019-10-12 15:52 | 46 | 0d |  | 王战永 [70%] | 4h |
| 48 | 1.2.3.1.9 | 查看实验组-查看拥有设备-安排实验用户-安排实验用户 | 0.71d | 2019-10-12 15:52 | 2019-10-14 13:35 | 47 | 0d |  | 王战永 [70%] | 4h |
| 49 | 1.2.3.1.10 | 查看实验组-编辑实验组 | 0.71d | 2019-10-14 13:35 | 2019-10-15 10:18 | 48 | 0d |  | 王战永 [70%] | 4h |
| 50 | 1.2.3.1.11 | 查看实验组-删除实验组 | 0.71d | 2019-10-15 10:18 | 2019-10-16 08:00 | 49 | 0d |  | 王战永 [70%] | 4h |
| 51 | 1.2.3.1.12 | 编辑实验室 | 0.71d | 2019-10-16 08:00 | 2019-10-16 14:43 | 50 | 0d |  | 王战永 [70%] | 4h |
| 52 | 1.2.3.1.13 | 删除实验室 | 0.71d | 2019-10-16 14:43 | 2019-10-17 11:26 | 51 | 0d |  | 王战永 [70%] | 4h |

| ID | WBS | Task | Duration | Start | Finish | Predecessors | Total slack | Free slack | Resources | Work |
| --- | --- | --- | --- | --- | --- | --- | --- | --- | --- | --- |
| 53 | 1.2.3.2 | **底层设备控制模块** | 2.78d | 2019-10-08 10:40 | 2019-10-11 08:54 |  | 7.78d |  |  | 20h |
| 54 | 1.2.3.2.1 | 底层设备控制模块列表 | 0.56d | 2019-10-08 10:40 | 2019-10-08 16:07 | 37 | 7.78d | 0d | 冯雷 [90%] | 4h |
| 55 | 1.2.3.2.2 | 新增底层设备控制模块 | 0.56d | 2019-10-08 16:07 | 2019-10-09 11:33 | 54 | 7.78d | 0d | 冯雷 [90%] | 4h |
| 56 | 1.2.3.2.3 | 查看使用情况 | 0.56d | 2019-10-09 11:33 | 2019-10-10 08:00 | 55 | 7.78d | 0d | 冯雷 [90%] | 4h |
| 57 | 1.2.3.2.4 | 编辑底层设备控制模块 | 0.56d | 2019-10-10 08:00 | 2019-10-10 13:27 | 56 | 7.78d | 0d | 冯雷 [90%] | 4h |
| 58 | 1.2.3.2.5 | 删除底层设备控制模块 | 0.56d | 2019-10-10 13:27 | 2019-10-11 08:54 | 57 | 7.78d | 0d | 冯雷 [90%] | 4h |
| 59 | 1.2.3.3 | **网络拓扑管理模块** | 2.22d | 2019-10-11 08:54 | 2019-10-14 10:40 |  | 7.78d |  |  | 16h |
| 60 | 1.2.3.3.1 | 网络拓扑管理模块列表 | 0.56d | 2019-10-11 08:54 | 2019-10-11 14:20 | 58 | 7.78d | 0d | 冯雷 [90%] | 4h |
| 61 | 1.2.3.3.2 | 新增络拓扑管理模块 | 0.56d | 2019-10-11 14:20 | 2019-10-12 09:47 | 60 | 7.78d | 0d | 冯雷 [90%] | 4h |
| 62 | 1.2.3.3.3 | 编辑络拓扑管理模块 | 0.56d | 2019-10-12 09:47 | 2019-10-12 15:14 | 61 | 7.78d | 0d | 冯雷 [90%] | 4h |
| 63 | 1.2.3.3.4 | 删除络拓扑管理模块 | 0.56d | 2019-10-12 15:14 | 2019-10-14 10:40 | 62 | 7.78d | 0d | 冯雷 [90%] | 4h |
| 64 | 1.2.4 | **课程管理** | 13.81d | 2019-10-14 10:40 | 2019-11-01 09:10 |  | 0d |  |  | 76h |
| 65 | 1.2.4.1 | **课程管理** | 10.72d | 2019-10-17 11:26 | 2019-11-01 09:10 |  | 0d |  |  | 60h |
| 66 | 1.2.4.1.1 | 课程列表 | 0.71d | 2019-10-17 11:26 | 2019-10-18 09:09 | 52 | 0d |  | 王战永 [70%] | 4h |
| 67 | 1.2.4.1.2 | 新建课程 | 0.71d | 2019-10-18 09:09 | 2019-10-18 15:52 | 66 | 0d |  | 王战永 [70%] | 4h |
| 68 | 1.2.4.1.3 | 课件管理-课件列表 | 0.71d | 2019-10-18 15:52 | 2019-10-21 13:35 | 67 | 0d |  | 王战永 [70%] | 4h |
| 69 | 1.2.4.1.4 | 课件管理-导入课件 | 0.71d | 2019-10-21 13:35 | 2019-10-22 10:18 | 68 | 0d |  | 王战永 [70%] | 4h |
| 70 | 1.2.4.1.5 | 课件管理-编辑课件 | 0.71d | 2019-10-22 10:18 | 2019-10-23 08:01 | 69 | 0d |  | 王战永 [70%] | 4h |
| 71 | 1.2.4.1.6 | 课件管理-删除课件 | 0.71d | 2019-10-23 08:01 | 2019-10-23 14:44 | 70 | 0d |  | 王战永 [70%] | 4h |
| 72 | 1.2.4.1.7 | 课堂作业-课程作业列表 | 0.71d | 2019-10-23 14:44 | 2019-10-24 11:27 | 71 | 0d |  | 王战永 [70%] | 4h |
| 73 | 1.2.4.1.8 | 课堂作业-作业统计 | 0.71d | 2019-10-24 11:27 | 2019-10-25 09:09 | 72 | 0d |  | 王战永 [70%] | 4h |
| 74 | 1.2.4.1.9 | 课堂作业-布置作业 | 0.71d | 2019-10-25 09:09 | 2019-10-25 15:52 | 73 | 0d |  | 王战永 [70%] | 4h |
| 75 | 1.2.4.1.10 | 编辑课程-课程设置 | 0.71d | 2019-10-25 15:52 | 2019-10-28 13:35 | 74 | 0d |  | 王战永 [70%] | 4h |
| 76 | 1.2.4.1.11 | 编辑课程-课程信息-编辑课程信息 | 0.71d | 2019-10-28 13:35 | 2019-10-29 10:18 | 75 | 0d |  | 王战永 [70%] | 4h |
| 77 | 1.2.4.1.12 | 编辑课程-实验步骤-编辑实验步骤 | 0.71d | 2019-10-29 10:18 | 2019-10-30 08:01 | 76 | 0d |  | 王战永 [70%] | 4h |
| 78 | 1.2.4.1.13 | 编辑课程-教学大纲-编辑教学大纲 | 0.71d | 2019-10-30 08:01 | 2019-10-30 14:44 | 77 | 0d |  | 王战永 [70%] | 4h |
| 79 | 1.2.4.1.14 | 编辑课程-网络拓扑 | 0.71d | 2019-10-30 14:44 | 2019-10-31 11:27 | 78 | 0d |  | 王战永 [70%] | 4h |
| 80 | 1.2.4.1.15 | 删除课程 | 0.71d | 2019-10-31 11:27 | 2019-11-01 09:10 | 79 | 0d |  | 王战永 [70%] | 4h |

| ID | WBS | Task | Duration | Start | Finish | Predecessors | Total slack | Free slack | Resources | Work |
| --- | --- | --- | --- | --- | --- | --- | --- | --- | --- | --- |
| 81 | 1.2.4.2 | **课程分类** | 0.56d | 2019-10-14 10:40 | 2019-10-14 16:07 |  | 7.78d |  |  | 4h |
| 82 | 1.2.4.2.1 | 课程分类管理-添加二级分类 | 0.56d | 2019-10-14 10:40 | 2019-10-14 16:07 | 63 | 7.78d | 0d | 冯雷 [90%] | 4h |
| 83 | 1.2.4.3 | **课程调度** | 1.67d | 2019-10-14 16:07 | 2019-10-16 13:27 |  | 7.78d |  |  | 12h |
| 84 | 1.2.4.3.1 | 课程调度-课程调度列表 | 0.56d | 2019-10-14 16:07 | 2019-10-15 11:34 | 82 | 7.78d | 0d | 冯雷 [90%] | 4h |
| 85 | 1.2.4.3.2 | 课程调度-加载课程 | 0.56d | 2019-10-15 11:34 | 2019-10-16 08:00 | 84 | 7.78d | 0d | 冯雷 [90%] | 4h |
| 86 | 1.2.4.3.3 | 课程调度-添加实验组 | 0.56d | 2019-10-16 08:00 | 2019-10-16 13:27 | 85 | 7.78d | 0d | 冯雷 [90%] | 4h |
| 87 | 1.2.5 | **拓扑管理** | 5.56d | 2019-10-16 13:27 | 2019-10-24 08:54 |  | 7.78d |  |  | 40h |
| 88 | 1.2.5.1 | **网络拓扑分类** | 2.22d | 2019-10-16 13:27 | 2019-10-18 15:14 |  | 7.78d |  |  | 16h |
| 89 | 1.2.5.1.1 | 网络拓扑分类列表 | 0.56d | 2019-10-16 13:27 | 2019-10-17 08:54 | 86 | 7.78d | 0d | 冯雷 [90%] | 4h |
| 90 | 1.2.5.1.2 | 添加网络拓扑分类 | 0.56d | 2019-10-17 08:54 | 2019-10-17 14:21 | 89 | 7.78d | 0d | 冯雷 [90%] | 4h |
| 91 | 1.2.5.1.3 | 编辑网络拓扑分类 | 0.56d | 2019-10-17 14:21 | 2019-10-18 09:47 | 90 | 7.78d | 0d | 冯雷 [90%] | 4h |
| 92 | 1.2.5.1.4 | 删除网络拓扑分类 | 0.56d | 2019-10-18 09:47 | 2019-10-18 15:14 | 91 | 7.78d | 0d | 冯雷 [90%] | 4h |
| 93 | 1.2.5.2 | **拓扑端口管理** | 1.67d | 2019-10-18 15:14 | 2019-10-22 11:34 |  | 7.78d |  |  | 12h |
| 94 | 1.2.5.2.1 | 拓扑端口列表 | 0.56d | 2019-10-18 15:14 | 2019-10-21 10:41 | 92 | 7.78d | 0d | 冯雷 [90%] | 4h |
| 95 | 1.2.5.2.2 | 新增拓扑端口 | 0.56d | 2019-10-21 10:41 | 2019-10-21 16:07 | 94 | 7.78d | 0d | 冯雷 [90%] | 4h |
| 96 | 1.2.5.2.3 | 删除拓扑端口 | 0.56d | 2019-10-21 16:07 | 2019-10-22 11:34 | 95 | 7.78d | 0d | 冯雷 [90%] | 4h |
| 97 | 1.2.5.3 | **网络拓扑设计** | 1.67d | 2019-10-22 11:34 | 2019-10-24 08:54 |  | 7.78d |  |  | 12h |
| 98 | 1.2.5.3.1 | 添加网络拓扑 | 0.56d | 2019-10-22 11:34 | 2019-10-23 08:01 | 96 | 7.78d | 0d | 冯雷 [90%] | 4h |
| 99 | 1.2.5.3.2 | 编辑网络拓扑 | 0.56d | 2019-10-23 08:01 | 2019-10-23 13:27 | 98 | 7.78d | 0d | 冯雷 [90%] | 4h |
| 100 | 1.2.5.3.3 | 删除网络拓扑 | 0.56d | 2019-10-23 13:27 | 2019-10-24 08:54 | 99 | 7.78d | 0d | 冯雷 [90%] | 4h |
| 101 | 1.2.6 | **用户管理** | 12.46d | 2019-10-24 08:54 | 2019-11-11 13:36 |  | 0d |  |  | 60h |
| 102 | 1.2.6.1 | **组织管理** | 2.22d | 2019-10-24 08:54 | 2019-10-28 10:41 |  | 7.78d |  |  | 16h |
| 103 | 1.2.6.1.1 | 组织管理列表 | 0.56d | 2019-10-24 08:54 | 2019-10-24 14:21 | 100 | 7.78d | 0d | 冯雷 [90%] | 4h |
| 104 | 1.2.6.1.2 | 新建组织 | 0.56d | 2019-10-24 14:21 | 2019-10-25 09:48 | 103 | 7.78d | 0d | 冯雷 [90%] | 4h |
| 105 | 1.2.6.1.3 | 编辑组织 | 0.56d | 2019-10-25 09:48 | 2019-10-25 15:14 | 104 | 7.78d | 0d | 冯雷 [90%] | 4h |
| 106 | 1.2.6.1.4 | 删除组织 | 0.56d | 2019-10-25 15:14 | 2019-10-28 10:41 | 105 | 7.78d | 0d | 冯雷 [90%] | 4h |

| ID | WBS | Task | Duration | Start | Finish | Predecessors | Total slack | Free slack | Resources | Work |
| --- | --- | --- | --- | --- | --- | --- | --- | --- | --- | --- |
| 107 | 1.2.6.2 | **审核用户** | 1.11d | 2019-10-28 10:41 | 2019-10-29 11:34 |  | 7.78d |  |  | 8h |
| 108 | 1.2.6.2.1 | 审核用户列表 | 0.56d | 2019-10-28 10:41 | 2019-10-28 16:08 | 106 | 7.78d | 0d | 冯雷 [90%] | 4h |
| 109 | 1.2.6.2.2 | 删除审核用户 | 0.56d | 2019-10-28 16:08 | 2019-10-29 11:34 | 108 | 7.78d | 0d | 冯雷 [90%] | 4h |
| 110 | 1.2.6.3 | **用户管理** | 6.43d | 2019-11-01 09:10 | 2019-11-11 13:36 |  | 0d |  |  | 36h |
| 111 | 1.2.6.3.1 | 用户列表 | 0.71d | 2019-11-01 09:10 | 2019-11-01 15:53 | 80 | 0d |  | 王战永 [70%] | 4h |
| 112 | 1.2.6.3.2 | 新增用户 | 0.71d | 2019-11-01 15:53 | 2019-11-04 13:36 | 111 | 0d |  | 王战永 [70%] | 4h |
| 113 | 1.2.6.3.3 | 密文导入用户 | 0.71d | 2019-11-04 13:36 | 2019-11-05 10:18 | 112 | 0d |  | 王战永 [70%] | 4h |
| 114 | 1.2.6.3.4 | 明文导入用户 | 0.71d | 2019-11-05 10:18 | 2019-11-06 08:01 | 113 | 0d |  | 王战永 [70%] | 4h |
| 115 | 1.2.6.3.5 | 导出用户 | 0.71d | 2019-11-06 08:01 | 2019-11-06 14:44 | 114 | 0d |  | 王战永 [70%] | 4h |
| 116 | 1.2.6.3.6 | 启用/锁定用户 | 0.71d | 2019-11-06 14:44 | 2019-11-07 11:27 | 115 | 0d |  | 王战永 [70%] | 4h |
| 117 | 1.2.6.3.7 | 查看用户信息 | 0.71d | 2019-11-07 11:27 | 2019-11-08 09:10 | 116 | 0d |  | 王战永 [70%] | 4h |
| 118 | 1.2.6.3.8 | 编辑用户 | 0.71d | 2019-11-08 09:10 | 2019-11-08 15:53 | 117 | 0d |  | 王战永 [70%] | 4h |
| 119 | 1.2.6.3.9 | 删除用户 | 0.71d | 2019-11-08 15:53 | 2019-11-11 13:36 | 118 | 0d |  | 王战永 [70%] | 4h |
| 120 | 1.2.7 | **查询统计** | 7.78d | 2019-10-29 11:34 | 2019-11-08 09:48 |  | 7.78d |  |  | 56h |
| 121 | 1.2.7.1 | **用户考勤** | 1.67d | 2019-10-29 11:34 | 2019-10-31 08:54 |  | 7.78d |  |  | 12h |
| 122 | 1.2.7.1.1 | 用户考勤列表 | 0.56d | 2019-10-29 11:34 | 2019-10-30 08:01 | 109 | 7.78d | 0d | 冯雷 [90%] | 4h |
| 123 | 1.2.7.1.2 | 编辑用户考勤 | 0.56d | 2019-10-30 08:01 | 2019-10-30 13:28 | 122 | 7.78d | 0d | 冯雷 [90%] | 4h |
| 124 | 1.2.7.1.3 | 删除用户考勤 | 0.56d | 2019-10-30 13:28 | 2019-10-31 08:54 | 123 | 7.78d | 0d | 冯雷 [90%] | 4h |
| 125 | 1.2.7.2 | **在线用户** | 1.11d | 2019-10-31 08:54 | 2019-11-01 09:48 |  | 7.78d |  |  | 8h |
| 126 | 1.2.7.2.1 | 在线用户列表 | 0.56d | 2019-10-31 08:54 | 2019-10-31 14:21 | 124 | 7.78d | 0d | 冯雷 [90%] | 4h |
| 127 | 1.2.7.2.2 | 查看在线用户详情 | 0.56d | 2019-10-31 14:21 | 2019-11-01 09:48 | 126 | 7.78d | 0d | 冯雷 [90%] | 4h |
| 128 | 1.2.7.3 | **命令日志** | 1.67d | 2019-11-01 09:48 | 2019-11-04 16:08 |  | 7.78d |  |  | 12h |
| 129 | 1.2.7.3.1 | 命令日志列表 | 0.56d | 2019-11-01 09:48 | 2019-11-01 15:15 | 127 | 7.78d | 0d | 冯雷 [90%] | 4h |
| 130 | 1.2.7.3.2 | 查看详细命令 | 0.56d | 2019-11-01 15:15 | 2019-11-04 10:41 | 129 | 7.78d | 0d | 冯雷 [90%] | 4h |
| 131 | 1.2.7.3.3 | 删除命令日志 | 0.56d | 2019-11-04 10:41 | 2019-11-04 16:08 | 130 | 7.78d | 0d | 冯雷 [90%] | 4h |

| ID | WBS | Task | Duration | Start | Finish | Predecessors | Total slack | Free slack | Resources | Work |
| --- | --- | --- | --- | --- | --- | --- | --- | --- | --- | --- |
| 132 | 1.2.7.4 | **操作日志** | 1.11d | 2019-11-04 16:08 | 2019-11-06 08:01 |  | 7.78d |  |  | 8h |
| 133 | 1.2.7.4.1 | 操作日志列表 | 0.56d | 2019-11-04 16:08 | 2019-11-05 11:35 | 131 | 7.78d | 0d | 冯雷 [90%] | 4h |
| 134 | 1.2.7.4.2 | 查看操作日志 | 0.56d | 2019-11-05 11:35 | 2019-11-06 08:01 | 133 | 7.78d | 0d | 冯雷 [90%] | 4h |
| 135 | 1.2.7.5 | **恢复日志** | 1.11d | 2019-11-06 08:01 | 2019-11-07 08:55 |  | 7.78d |  |  | 8h |
| 136 | 1.2.7.5.1 | 恢复日志列表 | 0.56d | 2019-11-06 08:01 | 2019-11-06 13:28 | 134 | 7.78d | 0d | 冯雷 [90%] | 4h |
| 137 | 1.2.7.5.2 | 查看恢复日志备注 | 0.56d | 2019-11-06 13:28 | 2019-11-07 08:55 | 136 | 7.78d | 0d | 冯雷 [90%] | 4h |
| 138 | 1.2.7.6 | **设备使用情况** | 1.11d | 2019-11-07 08:55 | 2019-11-08 09:48 |  | 7.78d |  |  | 8h |
| 139 | 1.2.7.6.1 | 备使用情况列表 | 0.56d | 2019-11-07 08:55 | 2019-11-07 14:21 | 137 | 7.78d | 0d | 冯雷 [90%] | 4h |
| 140 | 1.2.7.6.2 | 删除设备使用情况 | 0.56d | 2019-11-07 14:21 | 2019-11-08 09:48 | 139 | 7.78d | 0d | 冯雷 [90%] | 4h |
| 141 | 1.2.8 | **实验帮助** | 2.14d | 2019-11-11 13:36 | 2019-11-13 14:45 |  | 0d |  |  | 12h |
| 142 | 1.2.8.1 | 实验帮助-实验帮助列表 | 0.71d | 2019-11-11 13:36 | 2019-11-12 10:19 | 119 | 0d |  | 王战永 [70%] | 4h |
| 143 | 1.2.8.2 | 实验帮助-上传实验帮助 | 0.71d | 2019-11-12 10:19 | 2019-11-13 08:02 | 142 | 0d |  | 王战永 [70%] | 4h |
| 144 | 1.2.8.3 | 实验帮助-删除实验帮助 | 0.71d | 2019-11-13 08:02 | 2019-11-13 14:45 | 143 | 0d |  | 王战永 [70%] | 4h |
| 145 | 1.2.9 | **设备恢复** | 0.56d | 2019-11-08 09:48 | 2019-11-08 15:15 |  | 7.78d |  |  | 4h |
| 146 | 1.2.9.1 | 设备恢复-设备恢复列表 | 0.56d | 2019-11-08 09:48 | 2019-11-08 15:15 | 140 | 7.78d | 0d | 冯雷 [90%] | 4h |
| 147 | 1.2.10 | **系统管理** | 4.29d | 2019-11-13 14:45 | 2019-11-20 08:02 |  | 0d |  |  | 24h |
| 148 | 1.2.10.1 | 系统设置-编辑系统设置 | 0.71d | 2019-11-13 14:45 | 2019-11-14 11:27 | 144 | 0d |  | 王战永 [70%] | 4h |
| 149 | 1.2.10.2 | 系统公告-系统公告列表 | 0.71d | 2019-11-14 11:27 | 2019-11-15 09:10 | 148 | 0d |  | 王战永 [70%] | 4h |
| 150 | 1.2.10.3 | 系统公告-发布系统公告 | 0.71d | 2019-11-15 09:10 | 2019-11-15 15:53 | 149 | 0d |  | 王战永 [70%] | 4h |
| 151 | 1.2.10.4 | 系统公告-查看系统公告详情 | 0.71d | 2019-11-15 15:53 | 2019-11-18 13:36 | 150 | 0d |  | 王战永 [70%] | 4h |
| 152 | 1.2.10.5 | 系统公告-删除系统公告 | 0.71d | 2019-11-18 13:36 | 2019-11-19 10:19 | 151 | 0d |  | 王战永 [70%] | 4h |
| 153 | 1.2.10.6 | 系统升级 | 0.71d | 2019-11-19 10:19 | 2019-11-20 08:02 | 152 | 0d |  | 王战永 [70%] | 4h |
| 154 | 1.3 | **前台功能** | 12.22d | 2019-11-08 15:15 | 2019-11-27 08:02 |  | 0d |  |  | 60h |
| 155 | 1.3.1 | **前台首页** | 11.51d | 2019-11-08 15:15 | 2019-11-26 10:19 |  | 0.16d |  |  | 52h |
| 156 | 1.3.1.1 | **课堂实验** | 1.11d | 2019-11-08 15:15 | 2019-11-11 16:08 |  | 7.78d |  |  | 8h |
| 157 | 1.3.1.1.1 | 课堂实验-课堂实验列表 | 0.56d | 2019-11-08 15:15 | 2019-11-11 10:42 | 146 | 7.78d | 0d | 冯雷 [90%] | 4h |
| 158 | 1.3.1.1.2 | 课堂实验-操作课堂实验 | 0.56d | 2019-11-11 10:42 | 2019-11-11 16:08 | 157 | 7.78d | 0d | 冯雷 [90%] | 4h |

| ID | WBS | Task | Duration | Start | Finish | Predecessors | Total slack | Free slack | Resources | Work |
| --- | --- | --- | --- | --- | --- | --- | --- | --- | --- | --- |
| 159 | 1.3.1.2 | **实验报告** | 2.22d | 2019-11-11 16:08 | 2019-11-14 08:55 |  | 7.78d |  |  | 16h |
| 160 | 1.3.1.2.1 | 实验报告-实验报告列表 | 0.56d | 2019-11-11 16:08 | 2019-11-12 11:35 | 158 | 7.78d | 0d | 冯雷 [90%] | 4h |
| 161 | 1.3.1.2.2 | 实验报告-查看实验报告详情 | 0.56d | 2019-11-12 11:35 | 2019-11-13 08:02 | 160 | 7.78d | 0d | 冯雷 [90%] | 4h |
| 162 | 1.3.1.2.3 | 实验报告-批改实验报告 | 0.56d | 2019-11-13 08:02 | 2019-11-13 13:28 | 161 | 7.78d | 0d | 冯雷 [90%] | 4h |
| 163 | 1.3.1.2.4 | 实验报告-删除实验报告 | 0.56d | 2019-11-13 13:28 | 2019-11-14 08:55 | 162 | 7.78d | 0d | 冯雷 [90%] | 4h |
| 164 | 1.3.1.3 | **实验日志** | 1.43d | 2019-11-20 08:02 | 2019-11-21 11:28 |  | 0d |  |  | 8h |
| 165 | 1.3.1.3.1 | 实验日志-实验日志列表 | 0.71d | 2019-11-20 08:02 | 2019-11-20 14:45 | 153 | 0d |  | 王战永 [70%] | 4h |
| 166 | 1.3.1.3.2 | 实验日志-查看详细命令 | 0.71d | 2019-11-20 14:45 | 2019-11-21 11:28 | 165 | 0d |  | 王战永 [70%] | 4h |
| 167 | 1.3.1.4 | **用户信息** | 1.43d | 2019-11-21 11:28 | 2019-11-22 15:54 |  | 0d |  |  | 8h |
| 168 | 1.3.1.4.1 | 信息修改-编辑用户信息 | 0.71d | 2019-11-21 11:28 | 2019-11-22 09:11 | 166 | 0d |  | 王战永 [70%] | 4h |
| 169 | 1.3.1.4.2 | 密码修改-修改密码 | 0.71d | 2019-11-22 09:11 | 2019-11-22 15:54 | 168 | 0d |  | 王战永 [70%] | 4h |
| 170 | 1.3.1.5 | **实验帮助** | 0.56d | 2019-11-14 08:55 | 2019-11-14 14:22 |  | 7.78d |  |  | 4h |
| 171 | 1.3.1.5.1 | 实验帮助-实验帮助列表 | 0.56d | 2019-11-14 08:55 | 2019-11-14 14:22 | 163 | 7.78d | 0d | 冯雷 [90%] | 4h |
| 172 | 1.3.1.6 | **系统公告** | 1.43d | 2019-11-22 15:54 | 2019-11-26 10:19 |  | 0d |  |  | 8h |
| 173 | 1.3.1.6.1 | 系统公告-系统公告列表 | 0.71d | 2019-11-22 15:54 | 2019-11-25 13:36 | 169 | 0d |  | 王战永 [70%] | 4h |
| 174 | 1.3.1.6.2 | 系统公告-查看系统公告详情 | 0.71d | 2019-11-25 13:36 | 2019-11-26 10:19 | 173 | 0d |  | 王战永 [70%] | 4h |
| 175 | 1.3.2 | **登录注册** | 8.33d | 2019-11-14 14:22 | 2019-11-27 08:02 |  | 0d |  |  | 8h |
| 176 | 1.3.2.1 | 登录页面 | 0.56d | 2019-11-14 14:22 | 2019-11-15 09:48 | 171 | 7.78d |  | 冯雷 [90%] | 4h |
| 177 | 1.3.2.2 | 注册页面 | 0.71d | 2019-11-26 10:19 | 2019-11-27 08:02 | 174 | 0d |  | 王战永 [70%] | 4h |
| 178 | 1.4 | 已知bug/需求修改 | 14.29d | 2019-11-27 08:02 | 2019-12-17 10:19 | 176, 177 | 0d |  | 冯雷 [90%]; 王战永 [70%] | 160h |
